# BI Solution

Schedule from MS Project, 2022-03-10 to 2022-05-16, status date 2022-05-10, costs in $, A marks actual dates.

## Calendars

- BI Solution: Mon-Fri 08:00-12:00, 13:00-17:00; Sat 08:00-24:00; Sun off. Exceptions (off unless hours are given): 2022-04-10 (Giổ tổ vua Hùng), 2022-04-30 (Giải phóng Miền Nam), 2022-05-01 (Quốc tế lao động).

## Resources

| Resource | Group | Rate |
| --- | --- | --- |
| Business Analysis(Minh Anh) | Member | 10 |
| ETL developer (Thúy) | Member | 9 |
| Fully Managed Reporting Services(Phương) | Member | 9 |
| Development developer(Vy) | Member | 10 |
| Project manager(Thu) | Member | 10 |
| Server hardware | Hardware | 50000 |
| SQL Server Standard license | Software | 13784 |
| Microsoft office | Software | 100 |
| Power BI Premium | Software | 1200 |
| Consultant(thầy Hồ) | Member | 5 |
| Training and other mise costs | Cost |  |
| Project management cost | Cost |  |

## Schedule

| ID | WBS | Task | Duration | Start | Finish | Predecessors | Complete | Remaining | Baseline start | Baseline finish | Baseline duration | Total slack | Free slack | Constraint | Resources | Work | Actual work | Cost | Baseline cost | Actual cost |
| --- | --- | --- | --- | --- | --- | --- | --- | --- | --- | --- | --- | --- | --- | --- | --- | --- | --- | --- | --- | --- |
| 1 | 1 | **Initiation** | 18d | 2022-03-10 A | 2022-03-27 |  | 98% | 0.45d | 2022-03-10 | 2022-03-24 | 14.75d | 48d |  |  |  | 176h | 171.6h | 1,696 | 1,616 | 1,653.6 |
| 2 | 1.1 | Analyzing SWOT | 5d | 2022-03-10 A | 2022-03-27 |  | 95% | 0.25d | 2022-03-10 | 2022-03-13 | 4d | 48d |  | start no earlier than 2022-03-10 | Business Analysis(Minh Anh) | 40h | 38h | 400 | 288 | 380 |
| 3 | 1.2 | Analyzing porter's 5 force | 4d | 2022-03-10 A | 2022-03-13 A |  | 100% |  | 2022-03-10 | 2022-03-13 | 4d |  |  | start no earlier than 2022-03-10 | Fully Managed Reporting Services(Phương) | 32h | 32h | 288 | 320 | 288 |
| 4 | 1.3 | Identify objective | 2d | 2022-03-15 A | 2022-03-17 | 3FS+2d | 95% | 0.1d | 2022-03-15 | 2022-03-17 | 2d | 4d | 0d |  | Project manager(Thu) | 16h | 15.2h | 160 | 160 | 152 |
| 5 | 1.4 | Analyzing payback, NPV | 4d | 2022-03-16 A | 2022-03-19 | 4FS-5% | 95% | 0.2d | 2022-03-16 | 2022-03-19 | 4d | 55.12d |  | start no earlier than 2022-03-16 | ETL developer (Thúy) | 32h | 30.4h | 288 | 288 | 273.6 |
| 6 | 1.5 | Create business case | 3d | 2022-03-19 A | 2022-03-23 A | 5 | 100% |  | 2022-03-19 | 2022-03-23 | 3d |  |  | finish no earlier than 2022-03-22 | Development developer(Vy) | 24h | 24h | 240 | 240 | 240 |
| 7 | 1.6 | Create project charter | 3d | 2022-03-19 A | 2022-03-23 A | 5, 4 | 100% |  | 2022-03-19 | 2022-03-23 | 3d |  |  | finish no earlier than 2022-03-22 | Project manager(Thu) | 24h | 24h | 240 | 240 | 240 |
| 8 | 1.7 | Sumarize phase 1 | 1d | 2022-03-23 A | 2022-03-24 A | 7, 2, 3, 4, 5, 6 | 100% |  | 2022-03-23 | 2022-03-24 | 1d |  |  | finish no earlier than 2022-03-22 | Project management cost [0.1%]; Project manager(Thu) | 8h | 8h | 80 | 80 | 80 |
| 9 | 2 | **Planning** | 9d | 2022-03-24 A | 2022-04-02 |  | 88% | 1.1d | 2022-03-24 | 2022-04-02 | 9d | 42.25d |  |  |  | 160h | 140.4h | 1,536 | 1,536 | 1,351.2 |
| 10 | 2.1 | Overview about BI | 1d | 2022-03-24 A | 2022-03-25 A | 8 | 100% |  | 2022-03-24 | 2022-03-25 | 1d |  |  | finish no earlier than 2022-03-24 | Business Analysis(Minh Anh) | 8h | 8h | 80 | 80 | 80 |
| 11 | 2.2 | ETL Process | 4d | 2022-03-25 A | 2022-03-31 | 10 | 70% | 1.2d | 2022-03-25 | 2022-03-31 | 4d | 44.25d |  |  | ETL developer (Thúy) | 32h | 22.4h | 288 | 288 | 201.6 |
| 12 | 2.3 | Data warehouse and Data Mart | 4d | 2022-03-25 A | 2022-03-29 | 10 | 85% | 0.6d | 2022-03-25 | 2022-03-29 | 4d | 46.25d |  | start no earlier than 2022-03-24 | Development developer(Vy) | 32h | 27.2h | 320 | 320 | 272 |
| 13 | 2.4 | KPIs | 4d | 2022-03-25 A | 2022-03-29 | 10 | 95% | 0.2d | 2022-03-25 | 2022-03-29 | 4d | 2.55d | 0d | start no earlier than 2022-03-24 | Fully Managed Reporting Services(Phương) | 32h | 30.4h | 288 | 288 | 273.6 |
| 14 | 2.5 | MDX language for analyzing multidimensional data and OLAP | 3d | 2022-03-29 A | 2022-04-01 | 13 | 85% | 0.45d | 2022-03-29 | 2022-04-01 | 3d | 43.25d |  |  | Project manager(Thu) | 24h | 20.4h | 240 | 240 | 204 |
| 15 | 2.6 | MDX language for analyzing multidimensional data and OLAP | 3d | 2022-03-29 A | 2022-04-01 A | 13 | 100% |  | 2022-03-29 | 2022-04-01 | 3d |  |  | start no earlier than 2022-03-27 | Development developer(Vy) | 24h | 24h | 240 | 240 | 240 |
| 16 | 2.7 | Sumarize phase 2 | 1d | 2022-04-01 A | 2022-04-02 A | 15 | 100% |  | 2022-04-01 | 2022-04-02 | 1d |  |  | start no earlier than 2022-04-01 | Project manager(Thu) | 8h | 8h | 80 | 80 | 80 |
| 17 | 3 | **REQUIREMENTS ANALYTICS AND INTRODUCTION TO BI SOLUTION** | 7d | 2022-04-02 A | 2022-04-09 |  | 96% | 0.29d | 2022-04-02 | 2022-04-09 | 7d | 35.25d |  |  |  | 256h | 243.2h | 67,264 | 67,264 | 65,781.6 |
| 18 | 3.1 | Business processes | 5d | 2022-04-02 A | 2022-04-07 A | 16 | 100% |  | 2022-04-02 | 2022-04-07 | 5d |  |  | start no earlier than 2022-04-02 | Project manager(Thu) | 40h | 40h | 400 | 400 | 400 |
| 19 | 3.2 | Data source and challenges | 5d | 2022-04-02 A | 2022-04-07 | 16 | 90% | 0.5d | 2022-04-02 | 2022-04-07 | 5d | 37.25d |  | start no earlier than 2022-04-02 | Business Analysis(Minh Anh); SQL Server Standard license | 40h | 36h | 14,184 | 14,184 | 12,765.6 |
| 20 | 3.3 | Business Requirements Analysis | 5d | 2022-04-02 A | 2022-04-07 | 16 | 90% | 0.5d | 2022-04-02 | 2022-04-07 | 5d | 37.25d |  | start no earlier than 2022-04-02 | Fully Managed Reporting Services(Phương); Consultant(thầy Hồ) | 80h | 72h | 560 | 560 | 504 |
| 21 | 3.4 | IT requirements Analysis | 5d | 2022-04-02 A | 2022-04-07 A | 16 | 100% |  | 2022-04-02 | 2022-04-07 | 5d |  |  | start no earlier than 2022-04-02 | Development developer(Vy); Server hardware | 40h | 40h | 50,400 | 50,400 | 50,400 |
| 22 | 3.5 | Comparative Analysis of BI and Data Visualization Tools | 5d | 2022-04-02 A | 2022-04-07 A | 16 | 100% |  | 2022-04-02 | 2022-04-07 | 5d |  |  | start no earlier than 2022-04-02 | ETL developer (Thúy); Power BI Premium | 40h | 40h | 1,560 | 1,560 | 1,560 |
| 23 | 3.6 | Sumarize phase 3 | 2d | 2022-04-07 A | 2022-04-09 | 22 | 95% | 0.1d | 2022-04-07 | 2022-04-09 | 2d | 8.25d | 0d | start no earlier than 2022-04-07 | Project manager(Thu) | 16h | 15.2h | 160 | 160 | 152 |
| 24 | 4 | **BUIDING DATA WAREHOUSE AND INTEGRATING DATA** | 36d | 2022-04-09 | 2022-05-16 |  |  |  | 2022-04-09 | 2022-05-16 | 36d |  |  |  |  | 160h |  | 3,312 | 3,312 |  |
| 25 | 4.1 | Designing Data Warehouse | 6d | 2022-04-09 | 2022-04-15 | 23 |  |  | 2022-04-09 | 2022-04-15 | 6d | 29.25d |  | start no earlier than 2022-04-09 | Training and other mise costs [0.1%]; Business Analysis(Minh Anh); Consultant(thầy Hồ) | 96h |  | 2,720 | 2,720 |  |
| 26 | 4.2 | ETL processes | 6d | 2022-04-09 | 2022-04-15 | 23 |  |  | 2022-04-09 | 2022-04-15 | 6d | 8.25d | 0d |  | ETL developer (Thúy) | 48h |  | 432 | 432 |  |
| 27 | 4.3 | Sumarize phase 4 | 2d | 2022-04-15 | 2022-04-16 | 26 |  |  | 2022-04-15 | 2022-04-16 | 2d | 8.25d | 0.25d |  | Project manager(Thu) | 16h |  | 160 | 160 |  |

Notes:
- 11: Đồ án BI triển khai muộn nęn bị gián đoạn một thời gian

| ID | WBS | Task | Duration | Start | Finish | Predecessors | Baseline start | Baseline finish | Baseline duration | Total slack | Free slack | Constraint | Resources | Work | Cost | Baseline cost |
| --- | --- | --- | --- | --- | --- | --- | --- | --- | --- | --- | --- | --- | --- | --- | --- | --- |
| 28 | 5 | **DATA ANALYTICS** | 8d | 2022-04-18 | 2022-04-25 |  | 2022-04-18 | 2022-04-25 | 8d | 8d |  |  |  | 112h | 1,072 | 1,072 |
| 29 | 5.1 | Data analytics with SSAS technology | 6d | 2022-04-18 | 2022-04-23 | 27 | 2022-04-18 | 2022-04-23 | 6d | 21d |  | start no earlier than 2022-04-17 | Fully Managed Reporting Services(Phương) | 48h | 432 | 432 |
| 30 | 5.2 | . Data analytics with MDX and OLAP technique | 6d | 2022-04-18 | 2022-04-23 | 27 | 2022-04-18 | 2022-04-23 | 6d | 8d | 0d | start no earlier than 2022-04-17 | Business Analysis(Minh Anh) | 48h | 480 | 480 |
| 31 | 5.3 | Sumarize phase 5 | 2d | 2022-04-23 | 2022-04-25 | 30 | 2022-04-23 | 2022-04-25 | 2d | 8d | 0d |  | Project manager(Thu) | 16h | 160 | 160 |
| 32 | 6 | **VISUALIZATION AND FORCASTING OR PREDICTIVE MODEL** | 13d | 2022-04-26 | 2022-05-10 |  | 2022-04-26 | 2022-05-10 | 13d | 6d |  |  |  | 160h | 3,660 | 3,660 |
| 33 | 6.1 | Report and dashboard systems | 3d | 2022-04-26 | 2022-04-28 | 31 | 2022-04-26 | 2022-04-28 | 3d | 16d |  | start no earlier than 2022-04-26 | Project management cost [0.1%]; Project manager(Thu) | 24h | 240 | 240 |
| 34 | 6.2 | Data analysis with Power BI | 3d | 2022-04-26 | 2022-04-28 | 31 | 2022-04-26 | 2022-04-28 | 3d | 16d |  | start no earlier than 2022-04-26 | Business Analysis(Minh Anh) | 24h | 240 | 240 |
| 35 | 6.3 | Data analysis with the Pivot Table tool in Microsoft Excel | 3d | 2022-04-26 | 2022-04-28 | 31 | 2022-04-26 | 2022-04-28 | 3d | 16d |  | start no earlier than 2022-04-26 | Microsoft office; Fully Managed Reporting Services(Phương) | 24h | 316 | 316 |
| 36 | 6.4 | Data analysis with Tableau | 3d | 2022-04-26 | 2022-04-28 | 31 | 2022-04-26 | 2022-04-28 | 3d | 8d | 1d | start no earlier than 2022-04-26 | Development developer(Vy) | 24h | 240 | 240 |
| 37 | 6.5 | Time series and Forecasting or Predictive model | 2d | 2022-05-02 | 2022-05-03 | 36 | 2022-05-02 | 2022-05-03 | 2d | 7d | 0d | start no earlier than 2022-05-02 | Business Analysis(Minh Anh) | 16h | 160 | 160 |
| 38 | 6.6 | Evaluation and Discussion | 2d | 2022-05-04 | 2022-05-05 | 37 | 2022-05-04 | 2022-05-05 | 2d | 7d | 0d | start no earlier than 2022-05-03 | ETL developer (Thúy) | 16h | 144 | 144 |
| 39 | 6.7 | Sumarize phase 6 | 2d | 2022-05-06 | 2022-05-07 | 38 | 2022-05-06 | 2022-05-07 | 2d | 7d | 1d | start no earlier than 2022-05-05 | Project manager(Thu) | 16h | 160 | 160 |
| 40 | 6.8 | Sumarize project | 2d | 2022-05-09 | 2022-05-10 | 39 | 2022-05-09 | 2022-05-10 | 2d | 6d |  | start no earlier than 2022-05-08 | Project manager(Thu); Project management cost [0.1%] | 16h | 2,160 | 2,160 |
